# Saratoga Senior Community

Schedule from Primavera P6, 2014-01-01 to 2017-10-10, data date 2014-01-01.
ï»¿

## Calendars

- Trades - 5 Day Workweek: Mon-Fri 08:00-11:59, 13:00-16:59; Sat-Sun off.

## Resources

| Resource | Group | Rate | Notes |
| --- | --- | --- | --- |
| Plumber | labor | 7 |  |
| Electrician | labor | 4 |  |
| HVAC | labor | 7 |  |
| FF&E Specialties | labor | 54 |  |
| Painter | labor | 4 |  |
| Drywall Subcontractor | labor | 45 | ï»¿ <BO |
| Conveying Subcontractor | labor | 80 |  |
| Finishes & Fit-out Subcontractor | labor | 55 | ï»¿ <BO |
| Floor and Carpet Layer | labor | 4 |  |
| Rough Carpenter | labor | 7 |  |
| Finish Carpenter | labor | 7 |  |
| Millwork Subcontractor | labor | 70 |  |
| Pool Installation Subcontractor | labor | 105 |  |
| Laborer-Construction | labor | 4 |  |
| Roofing Subcontractor | labor | 75 |  |
| Specialty Metal Fabricator Subcontractor | labor | 110 |  |
| Concrete Foundation Subcontractor | labor | 100 |  |
| Project Managers | labor | 50 |  |
| Fire Suppression Subcontractor | labor | 85 |  |
| Landscaping Subcontractor | labor | 40 |  |
| Thermal Protection Subcontractor | labor | 120 |  |
| Glass & Glazing Subcontractor | labor | 87 |  |
| Utilities Subcontractor | labor | 105 |  |
| Paving & Roadways Subcontractor | labor | 130 |  |
| Owen McGuire, Project Manager | labor | 65 |  |
| OK | material | 1 |  |

## Schedule

| ID | WBS | Activity | Type | Duration | Start | Finish | Predecessors | Resources | Cost | Key Milestones | Department | Responsibility | Phase |
| --- | --- | --- | --- | --- | --- | --- | --- | --- | --- | --- | --- | --- | --- |
|  | 1 | **Building 1** |  |  | 2014-01-01 | 2017-10-10 |  |  |  |  |  |  |  |
| EC2440 |  | Complete Building 1 | milestone | 0d | 2017-10-10 | 2017-10-10 | EC2240, EC1790, EC1850, EC2360, EC1630, EC1780, EC2290, EC1670, EC1700, EC2270, EC2400, EC2140, EC1910, EC2080, EC2250 FF, EC1990, EC2370, EC1550, EC1950, EC2260 |  |  | Key MS | CON | MILLS | FINSH |
|  | 1 | **Structure** |  |  | 2014-01-01 | 2015-03-17 |  |  |  |  |  |  |  |
| EC2033 |  | A_BG_KOLON PERDE |  | 257d | 2014-01-01 | 2014-12-25 | EC1110 FF, EC1080 | OK [433] | 433 |  | CON | NOLAN | FOUND |
| EC2032 |  | B_1P_DOSEME KIRIS |  | 2d | 2014-12-26 | 2014-12-29 | EC2033 |  |  |  |  |  |  |
| EC2031 |  | C_1P_KOLON PERDE |  | 13.5d | 2014-12-30 | 2015-01-16 | EC2033, EC2032 | Laborer-Construction [108 h] | 432 |  | CON | NOLAN | FOUND |
| EC2029 |  | D_2P_DOSEME KIRIS |  | 5d | 2015-01-16 | 2015-01-23 | EC2032, EC2031 |  |  |  |  |  |  |
| EC2028 |  | E_2P_KOLON PERDE |  | 3d | 2015-01-23 | 2015-01-28 | EC2031, EC2029 | Laborer-Construction [23.11 h] | 92.43 |  | CON | NOLAN | FOUND |
| EC2027 |  | F_3P_DOSEME KIRIS |  | 2d | 2015-01-28 | 2015-01-30 | EC2028, EC2028 FF | Laborer-Construction [15.14 h] | 60.56 |  | CON | NOLAN | FOUND |
| EC2026 |  | G_3P_KOLON PERDE |  | 2d | 2015-01-30 | 2015-02-03 | EC2027, EC2027 FF | Laborer-Construction [15 h] | 60 |  | CON | NOLAN | FOUND |
| EC2025 |  | M_6P_DOSEME KIRIS |  | 2d | 2015-02-03 | 2015-02-05 | EC2026, EC2026 FF | Laborer-Construction [16 h] | 64 |  | CON | FOLEY | FOUND |
| EC2024 |  | M_6P_DOSEME KIRIS |  | 1d | 2015-02-05 | 2015-02-06 | EC2025, EC2025 FF | Laborer-Construction |  |  | CON | FOLEY | FOUND |
| EC2023 |  | K_5P_DOSEME KIRIS |  | 2d | 2015-02-06 | 2015-02-10 | EC2024, EC2024 FF | Laborer-Construction [16 h] | 64 |  | CON | FOLEY | FOUND |
| EC2022 |  | J_4P_KOLON PERDE |  | 2d | 2015-02-10 | 2015-02-12 | EC2023, EC2023 FF | Laborer-Construction [16.07 h] | 64.3 |  | CON | FOLEY | FOUND |
| EC2021 |  | L_5P_KOLON PERDE |  | 2d | 2015-02-12 | 2015-02-16 | EC2022 FF, EC2022 | Laborer-Construction [15.07 h] | 60.28 |  | CON | EVANS | FOUND |
| EC2019 |  | O_7P_DOSEME KIRIS |  | 2d | 2015-02-16 | 2015-02-18 | EC2021 FF, EC2021 | Laborer-Construction [15.2 h] | 60.8 |  | CON | EVANS | FOUND |
| EC2018 |  | H_4P_DOSEME KIRIS |  | 2d | 2015-02-18 | 2015-02-20 | EC2019 |  |  |  |  |  |  |
| EC2017 |  | P_7P_KOLON PERDE |  | 2d | 2015-02-20 | 2015-02-24 | EC2018 FF, EC2018 |  |  |  |  |  |  |
| EC2016 |  | R_8P_DOSEME KIRIS |  | 2d | 2015-02-24 | 2015-02-26 | EC2017 FF, EC2017 |  |  |  |  |  |  |
| EC2015 |  | S_8P_KOLON PERDE |  | 2d | 2015-02-26 | 2015-03-02 | EC2016 FF, EC2016 |  |  |  |  |  |  |
| EC2014 |  | U_9P_DOSEME KIRIS |  | 2d | 2015-03-02 | 2015-03-04 | EC2015 FF, EC2015 |  |  |  |  |  |  |
| EC2013 |  | V_9P_KOLON PERDE |  | 2d | 2015-03-04 | 2015-03-06 | EC2014 FF, EC2014 |  |  |  |  |  |  |
| EC2012 |  | Y_9P'_DOSEME KIRIS |  | 2d | 2015-03-06 | 2015-03-10 | EC2013 FF, EC2013 |  |  |  |  |  |  |
| EC2011 |  | Z_9P'_KOLON PERDE |  | 5d | 2015-03-10 | 2015-03-17 | EC2012 FF, EC2012 |  |  |  |  |  |  |

| ID | WBS | Activity | Type | Duration | Start | Finish | Predecessors | Resources | Cost | Phase | Responsibility | Department | Key Milestones |
| --- | --- | --- | --- | --- | --- | --- | --- | --- | --- | --- | --- | --- | --- |
|  | 2 | **Roof** |  |  | 2015-02-18 | 2015-06-08 |  |  |  |  |  |  |  |
| EC1390 |  | Place Roof Trusses and Sheathing |  | 27.1d | 2015-02-18 | 2015-03-27 | EC2019 | Roofing Subcontractor [216 h]; Specialty Metal Fabricator Subcontractor [216 h] | 39,960 | STRUC | EVANS | CON |  |
| EC1400 |  | Place Mechanical Equipment Supports |  | 27.1d | 2015-02-18 | 2015-03-27 | EC2019 | Roofing Subcontractor [216 h] | 16,200 | STRUC | MASON | ENG |  |
| EC1530 |  | Built-Up Asphalt Roofing |  | 37.9d | 2015-03-27 | 2015-05-20 | EC1400 | Roofing Subcontractor [302.4 h] | 22,680 | STRUC | MASON | CON |  |
| EC1540 |  | Felt and Tile Roofing |  | 51.4d | 2015-03-27 | 2015-06-08 | EC1390 | Roofing Subcontractor [410.4 h] | 30,780 | STRUC | EVANS | CON |  |
| EC1780 |  | Roof Complete | milestone | 0d | 2015-06-08 | 2015-06-08 | EC1530, EC1010, EC1540 |  |  | STRUC | MASON | ENG | Key MS |
|  | 3 | **Envelope** |  |  | 2015-02-16 | 2015-11-23 |  |  |  |  |  |  |  |
| EC1360 |  | Mobilize Scaffolding |  | 13.6d | 2015-02-16 | 2015-03-06 | EC2019 SS | Thermal Protection Subcontractor [108 h] | 12,960 | CLOSE | EVANS | CON |  |
| EC1410 |  | Install Exterior Windows and Sliding Glass Doors Floor 1 |  | 21.73d | 2015-02-18 | 2015-03-20 | EC2019 | Thermal Protection Subcontractor [172.8 h] | 20,736 | CLOSE | EVANS | CON |  |
| EC1470 |  | Install Exterior Windows and Sliding Glass Doors Floor 2 |  | 21.6d | 2015-03-13 | 2015-04-13 | EC1410 FS-5d | Thermal Protection Subcontractor [172.8 h] | 20,736 | CLOSE | EVANS | ENG |  |
| EC1490 |  | Install Backing & Cauld Windows Floor1 |  | 10.8d | 2015-03-16 | 2015-03-31 | EC1410 FS-4d, EC1360 | Thermal Protection Subcontractor [86.4 h] | 10,368 | CLOSE | EVANS | CON |  |
| EC1500 |  | Install Exterior Windows and Sliding Glass Doors Floor 3 |  | 19d | 2015-04-06 | 2015-05-01 | EC1470 FS-5d | Thermal Protection Subcontractor [151.2 h] | 18,144 | CLOSE | EVANS | ENG |  |
| EC1510 |  | Install Backing & Cauld Windows Floor 2 |  | 11d | 2015-04-07 | 2015-04-22 | EC1470 FS-4d, EC1490 | Thermal Protection Subcontractor [86.4 h] | 10,368 | CLOSE | EVANS | CON |  |
| EC1520 |  | Install Exterior Windows and Sliding Glass Doors Floor 4 |  | 24.43d | 2015-04-24 | 2015-05-29 | EC1500 FS-5d | Owen McGuire, Project Manager [194.4 h]; Thermal Protection Subcontractor [194.4 h] | 35,964 | CLOSE | EVANS | ENG |  |
| EC1570 |  | Install Backing & Cauld Windows Floor 3 |  | 8.1d | 2015-04-27 | 2015-05-07 | EC1500 FS-4d, EC1510 | Thermal Protection Subcontractor [64.8 h] | 7,776 | CLOSE | EVANS | CON |  |
| EC1650 |  | Install Backing & Cauld Windows Floor 4 |  | 10.93d | 2015-05-25 | 2015-06-09 | EC1520 FS-4d, EC1570 | Thermal Protection Subcontractor [86.4 h] | 10,368 | CLOSE | EVANS | CON |  |
| EC1580 |  | Stucco Bands |  | 11d | 2015-05-26 | 2015-06-10 | EC1650 FS-10d, EC1510 | Thermal Protection Subcontractor [86.4 h] | 10,368 | CLOSE | EVANS | ENG |  |
| EC1660 |  | Stucco Grey |  | 21.73d | 2015-06-10 | 2015-07-09 | EC1580 | Thermal Protection Subcontractor [172.8 h] | 20,736 | CLOSE | EVANS | CON |  |
| EC1690 |  | Stucco Finish Coat |  | 27d | 2015-07-09 | 2015-08-17 | EC1660 | Thermal Protection Subcontractor [216 h] | 25,920 | CLOSE | EVANS | CON |  |
| EC1840 |  | Caulk |  | 10.93d | 2015-08-17 | 2015-09-01 | EC1690 | Thermal Protection Subcontractor [86.4 h] | 10,368 | CLOSE | HARIS | CON |  |
| EC1900 |  | Stucco Band Trim |  | 13.5d | 2015-09-01 | 2015-09-21 | EC1840 | Thermal Protection Subcontractor [108 h] | 12,960 | CLOSE | HARIS | CON |  |
| EC1980 |  | Paint Exterior |  | 13.5d | 2015-09-28 | 2015-10-15 | EC1900 FS+5d | Painter [108 h] | 432 | CLOSE | HARIS | CON |  |
| EC1990 |  | Install Railings |  | 40.5d | 2015-09-28 | 2015-11-23 | EC1980 SS | Thermal Protection Subcontractor [324 h] | 38,880 | CLOSE | MILLS | CON |  |
| EC2110 |  | Demobilize Scaffolding |  | 13.5d | 2015-10-15 | 2015-11-04 | EC1980 | Thermal Protection Subcontractor [108 h] | 12,960 | CLOSE | HARIS | CON |  |
| EC2140 |  | Shell Complete | milestone | 0d | 2015-11-23 | 2015-11-23 | EC2110, EC1990 |  |  | CLOSE | MILLS | CON | Key MS |

| ID | WBS | Activity | Type | Duration | Start | Finish | Predecessors | Resources | Cost | Responsibility | Phase | Department | Key Milestones |
| --- | --- | --- | --- | --- | --- | --- | --- | --- | --- | --- | --- | --- | --- |
|  | 4 | **Interior Finishes** |  |  | 2015-03-27 | 2016-08-17 |  |  |  |  |  |  |  |
| EC1550 |  | Unit Finishes Building North - Floor 1 |  | 221.5d | 2015-03-27 | 2016-02-02 | EC1530 SS, EC1540 SS | Plumber [98.18 h]; Electrician [98.18 h]; HVAC [98.18 h]; FF&E Specialties [98.18 h]; Painter [32.4 h]; Drywall Subcontractor [98.18 h]; Finishes & Fit-out Subcontractor [98.18 h]; Rough Carpenter [98.18 h]; Finish Carpenter [98.18 h]; Millwork Subcontractor [98.18 h]; Floor and Carpet Layer [98.18 h] | 25,656.87 | MASON | FINSH | CON |  |
| EC1630 |  | Unit Finishes Building South - Floor 1 |  | 224.22d | 2015-04-03 | 2016-02-11 | EC1550 SS+5d | Finishes & Fit-out Subcontractor [98.18 h]; Rough Carpenter [98.18 h]; Finish Carpenter [98.18 h]; Millwork Subcontractor [98.18 h]; Floor and Carpet Layer [98.18 h]; Plumber [98.18 h]; Electrician [98.18 h]; HVAC [98.18 h]; FF&E Specialties [98.18 h]; Painter [32.4 h]; Drywall Subcontractor [98.18 h] | 25,656.87 | MASON | FINSH | CON |  |
| EC1670 |  | Unit Finishes Building North - Floor 2 |  | 224.22d | 2015-04-10 | 2016-02-18 | EC1630 SS+5d | Finishes & Fit-out Subcontractor [98.18 h]; Rough Carpenter [98.18 h]; Finish Carpenter [98.18 h]; Millwork Subcontractor [98.18 h]; Floor and Carpet Layer [98.18 h]; Plumber [98.18 h]; Electrician [98.18 h]; HVAC [98.18 h]; FF&E Specialties [98.18 h]; Painter [32.4 h]; Drywall Subcontractor [98.18 h] | 25,656.87 | MASON | FINSH | CON |  |
| EC1700 |  | Unit Finishes Building South - Floor 2 |  | 224.22d | 2015-04-17 | 2016-02-25 | EC1670 SS+5d | Finishes & Fit-out Subcontractor [98.18 h]; Rough Carpenter [98.18 h]; Finish Carpenter [98.18 h]; Millwork Subcontractor [98.18 h]; Floor and Carpet Layer [98.18 h]; Plumber [98.18 h]; Electrician [98.18 h]; HVAC [98.18 h]; FF&E Specialties [98.18 h]; Painter [32.4 h]; Drywall Subcontractor [98.18 h] | 25,656.87 | MASON | FINSH | CON |  |
| EC1790 |  | Unit Finishes Building North - Floor 3 |  | 224.22d | 2015-04-24 | 2016-03-03 | EC1700 SS+5d, EC1820 FF+40d | Finishes & Fit-out Subcontractor [98.18 h]; Rough Carpenter [98.18 h]; Finish Carpenter [98.18 h]; Millwork Subcontractor [98.18 h]; Floor and Carpet Layer [98.18 h]; Plumber [98.18 h]; Electrician [98.18 h]; HVAC [98.18 h]; FF&E Specialties [98.18 h]; Painter [32.4 h]; Drywall Subcontractor [98.18 h] | 25,656.87 | MASON | FINSH | CON |  |
| EC1850 |  | Unit Finishes Building South - Floor 3 |  | 224.22d | 2015-05-01 | 2016-03-10 | EC1790 SS+5d | Finishes & Fit-out Subcontractor [98.18 h]; Rough Carpenter [98.18 h]; Finish Carpenter [98.18 h]; Millwork Subcontractor [98.18 h]; Floor and Carpet Layer [98.18 h]; Plumber [98.18 h]; Electrician [98.18 h]; HVAC [98.18 h]; FF&E Specialties [98.18 h]; Painter [32.4 h]; Drywall Subcontractor [98.18 h] | 25,656.87 | MASON | FINSH | CON |  |
| EC1910 |  | Unit Finishes Building North - Floor 4 |  | 226.9d | 2015-05-08 | 2016-03-22 | EC1850 SS+5d | Finishes & Fit-out Subcontractor [98.18 h]; Rough Carpenter [98.18 h]; Finish Carpenter [98.18 h]; Millwork Subcontractor [98.18 h]; Floor and Carpet Layer [98.18 h]; Plumber [98.18 h]; Electrician [98.18 h]; HVAC [98.18 h]; FF&E Specialties [98.18 h]; Painter [32.4 h]; Drywall Subcontractor [98.18 h] | 25,656.87 | MASON | FINSH | CON |  |
| EC1950 |  | Unit Finishes Building South - Floor 4 |  | 226.9d | 2015-05-15 | 2016-03-29 | EC1910 SS+5d | Finishes & Fit-out Subcontractor [98.18 h]; Rough Carpenter [98.18 h]; Finish Carpenter [98.18 h]; Millwork Subcontractor [98.18 h]; Floor and Carpet Layer [98.18 h]; Plumber [98.18 h]; Electrician [98.18 h]; HVAC [98.18 h]; FF&E Specialties [98.18 h]; Painter [32.4 h]; Drywall Subcontractor [98.18 h] | 25,656.87 | MASON | FINSH | CON |  |
| EC1820 |  | Building 2 Elevators Complete |  | 78.55d | 2015-06-09 | 2015-09-25 | EC1440 FF+15d, EC1780, EC1550 SS | Conveying Subcontractor [432 h]; Electrician [432 h] | 36,288 | MASON | FINSH | ENG |  |
| EC2240 |  | Tenant Finishes for Clubhouse Areas |  | 143.22d | 2016-01-28 | 2016-08-17 | EC1630 FS-10d | Finishes & Fit-out Subcontractor [270 h]; Floor and Carpet Layer [270 h]; Plumber [270 h]; Electrician [270 h]; HVAC [270 h]; FF&E Specialties [270 h]; Painter [90 h]; Drywall Subcontractor [270 h] | 47,880 | HARIS | FINSH | CON |  |
| EC2370 |  | Final Inspections and Punchlist |  | 100.65d | 2016-03-29 | 2016-08-17 | EC2240 FF, EC1700, EC1550, EC1670, EC1790, EC1850, EC1630, EC1910, EC1950 | Plumber [81 h]; Electrician [81 h]; HVAC [81 h]; FF&E Specialties [81 h]; Painter [27 h]; Drywall Subcontractor [81 h]; Finishes & Fit-out Subcontractor [81 h]; Floor and Carpet Layer [81 h] | 25,083 | MASON | FINSH | CON |  |
|  | 5 | **Pool & Courtyard** |  |  | 2015-10-21 | 2016-07-21 |  |  |  |  |  |  |  |
| EC2080 |  | Pool & Deck |  | 159.2d | 2015-10-21 | 2016-05-31 | EC2110 FS-10d, EC1540 | Pool Installation Subcontractor [756 h] | 79,380 | HARIS | FINSH | CON |  |
| EC2270 |  | Pergola and Amenities |  | 56.8d | 2016-05-03 | 2016-07-21 | EC2080 FS-20d | Pool Installation Subcontractor [453.6 h] | 47,628 | MILLS | FINSH | ENG |  |
|  | 2 | **Building 2** |  |  | 2014-01-01 | 2015-07-27 |  |  |  |  |  |  |  |
| EC2420 |  | Complete Building 2 | milestone | 0d | 2015-07-27 | 2015-07-27 | EC2070, EC2410, EC2150, EC2200, EC2120, EC2030, EC2210, EC2330, EC2170, EC2340 |  |  | MILLS | FINSH | CON | Key MS |
|  | 1 | **Structure** |  |  |  |  |  |  |  |  |  |  |  |
|  | 2 | **Roof** |  |  | 2014-01-01 | 2014-04-21 |  |  |  |  |  |  |  |
| EC1710 |  | Place Roof Trusses and Sheathing |  | 27.12d | 2014-01-01 | 2014-02-07 |  | Roofing Subcontractor [216 h]; Specialty Metal Fabricator Subcontractor [216 h] | 79,920 | MILLS | ROUGH | CON |  |
| EC1720 |  | Place Mechanical Equipment Supports |  | 27.12d | 2014-01-01 | 2014-02-07 |  | Roofing Subcontractor [216 h] | 32,400 | MILLS | ROUGH | CON |  |
| EC1860 |  | Built-Up Asphalt Roofing |  | 37.92d | 2014-02-07 | 2014-04-02 | EC1720 | Roofing Subcontractor [302.4 h] | 45,360 | MILLS | ROUGH | CON |  |
| EC1870 |  | Felt and Tile Roofing |  | 51.42d | 2014-02-07 | 2014-04-21 | EC1710 | Roofing Subcontractor [410.4 h] | 61,560 | MILLS | ROUGH | CON |  |
| EC2020 |  | Roof Complete | milestone | 0d | 2014-04-21 | 2014-04-21 | EC1870, EC1860 |  |  | MILLS | ROUGH | CON | Key MS |

Notes:
- EC1550: ï»¿ <IMG alt="" hspace=0 / src="file:///C:\`Presales\Documents\Plant Photos\GP container_mills.jpg" align=baseline / borde
- EC1670: Steps: Install Plumbing Risers; Sprinkler Rough In; Layout and Top Rack; Electrical Rough In; Interior Rough and Finishes; HVAC Duct Rough In; HVAC Rough Inspection; Frame Walls & Soffits & Prehang; Install Plumbing In Walls; Electrical Wiring; Plumbing Rough Inspection; Electrical Rough Inspection; Framing Inspection; Install Insulation & Drywall One Side; Install Drywall 2nd Side; Finish Drywall (Bead, Tape, Knockdown Texture); Cut Plugs & Switches; Install Interior Door Frames; Interior Trim & Millwork; Paint; Install Cabinet Carcasss; Tile Kitchen, Foyer & Baths; Install Kit Plumbing Fixtures; Install Bath Mirrors & Enclosures; Install Bath Harware & Accessories; Finish Kitchen & Bath Plumbing; Paint 2nd Coat; Finish Plumbing Inspection; Install HVAC Unit & Startup; Carpet Units; Install Interior Doors; Install Security Finishes; Touch Up Drywall; Install Appliances; Touch Up Paint; Punchlist

| ID | WBS | Activity | Type | Duration | Start | Finish | Predecessors | Resources | Cost | Phase | Responsibility | Department | Key Milestones |
| --- | --- | --- | --- | --- | --- | --- | --- | --- | --- | --- | --- | --- | --- |
|  | 3 | **Envelope** |  |  | 2014-01-01 | 2015-01-12 |  |  |  |  |  |  |  |
| EC1730 |  | Install Exterior Windows and Sliding Glass Doors Floor 1 |  | 27.12d | 2014-01-01 | 2014-02-07 |  | Thermal Protection Subcontractor [216 h]; Glass & Glazing Subcontractor [216 h] | 89,424 | CLOSE | MILLS | CON |  |
| EC1740 |  | Mobilize Scaffolding |  | 13.62d | 2014-01-01 | 2014-01-20 |  | Thermal Protection Subcontractor [108 h] | 25,920 | CLOSE | HARIS | CON |  |
| EC1800 |  | Install Exterior Windows and Sliding Glass Doors Floor 2 |  | 24.43d | 2014-01-31 | 2014-03-06 | EC1730 FS-5d | Thermal Protection Subcontractor [194.4 h]; Glass & Glazing Subcontractor [194.4 h] | 80,481.6 | CLOSE | MILLS | CON |  |
| EC1830 |  | Install Backing & Cauld Windows Floor1 |  | 13.62d | 2014-02-03 | 2014-02-20 | EC1740, EC1730 FS-4d | Thermal Protection Subcontractor [108 h] | 25,920 | CLOSE | MASON | CON |  |
| EC1880 |  | Install Exterior Windows and Sliding Glass Doors Floor 3 |  | 24.3d | 2014-02-27 | 2014-04-02 | EC1800 FS-5d | Thermal Protection Subcontractor [194.4 h]; Glass & Glazing Subcontractor [194.4 h] | 80,481.6 | CLOSE | MILLS | CON |  |
| EC1890 |  | Install Backing & Cauld Windows Floor 2 |  | 10.8d | 2014-02-28 | 2014-03-17 | EC1800 FS-4d, EC1830 | Thermal Protection Subcontractor [86.4 h] | 20,736 | CLOSE | MASON | CON |  |
| EC1920 |  | Install Exterior Windows and Sliding Glass Doors Floor 4 |  | 27.12d | 2014-03-26 | 2014-05-02 | EC1880 FS-5d | Thermal Protection Subcontractor [216 h]; Glass & Glazing Subcontractor [216 h] | 89,424 | CLOSE | MILLS | CON |  |
| EC1930 |  | Install Backing & Cauld Windows Floor 3 |  | 13.62d | 2014-03-27 | 2014-04-16 | EC1890, EC1880 FS-4d | Thermal Protection Subcontractor [108 h] | 25,920 | CLOSE | MILLS | CON |  |
| EC1960 |  | Install Backing & Cauld Windows Floor 4 |  | 13.62d | 2014-04-28 | 2014-05-16 | EC1930, EC1920 FS-4d | Thermal Protection Subcontractor [108 h] | 25,920 | CLOSE | MILLS | CON |  |
| EC1940 |  | Stucco Bands |  | 13.75d | 2014-05-02 | 2014-05-22 | EC1890, EC1960 FS-10d | Thermal Protection Subcontractor [108 h] | 25,920 | CLOSE | MILLS | CON |  |
| EC1970 |  | Stucco Grey |  | 27d | 2014-05-22 | 2014-06-30 | EC1940 | Thermal Protection Subcontractor [216 h] | 25,920 | CLOSE | MILLS | CON |  |
| EC2050 |  | Stucco Finish Coat |  | 27d | 2014-06-30 | 2014-08-06 | EC1970 | Thermal Protection Subcontractor [216 h] | 25,920 | CLOSE | MILLS | CON |  |
| EC2130 |  | Caulk |  | 13.5d | 2014-08-06 | 2014-08-25 | EC2050 | Thermal Protection Subcontractor [108 h] | 12,960 | CLOSE | MILLS | CON |  |
| EC2160 |  | Stucco Band Trim |  | 26.88d | 2014-08-25 | 2014-10-01 | EC2130 | Thermal Protection Subcontractor [216 h] | 25,920 | CLOSE | MILLS | CON |  |
| EC2220 |  | Paint Exterior |  | 54.12d | 2014-10-08 | 2014-12-23 | EC2160 FS+5d | Thermal Protection Subcontractor [432 h] | 103,680 | CLOSE | MILLS | CON |  |
| EC2230 |  | Install Railings |  | 40.62d | 2014-10-08 | 2014-12-04 | EC2220 SS | Thermal Protection Subcontractor [324 h] | 77,760 | CLOSE | MILLS | CON |  |
| EC2300 |  | Demobilize Scaffolding |  | 13.62d | 2014-12-23 | 2015-01-12 | EC2220 | Thermal Protection Subcontractor [108 h] | 25,920 | CLOSE | MILLS | CON |  |
| EC2320 |  | Fountain/Water Feature | milestone | 0d | 2015-01-12 | 2015-01-12 | EC2300, EC2230 |  |  | CLOSE | MASON | ENG | Key MS |
|  | 4 | **Interior Finishes** |  |  | 2014-04-14 | 2015-07-27 |  |  |  |  |  |  |  |
| EC2000 |  | Unit Finishes Building North - Floor 1 |  | 226.8d | 2014-04-14 | 2015-02-25 | EC1860, EC1870 FS-5d | Finishes & Fit-out Subcontractor [108 h]; Rough Carpenter [108 h]; Finish Carpenter [108 h]; Millwork Subcontractor [108 h]; Drywall Subcontractor [108 h]; Floor and Carpet Layer [108 h]; Painter [36 h]; Plumber [108 h]; HVAC [108 h]; Electrician [108 h] | 44,784 | FINSH | MASON | CON |  |
| EC2030 |  | Unit Finishes Building South - Floor 1 |  | 226.8d | 2014-04-21 | 2015-03-04 | EC2000 SS+5d | Finishes & Fit-out Subcontractor [108 h]; Rough Carpenter [108 h]; Finish Carpenter [108 h]; Millwork Subcontractor [108 h]; Drywall Subcontractor [108 h]; Floor and Carpet Layer [108 h]; Painter [36 h]; Plumber [108 h]; HVAC [108 h]; Electrician [108 h] | 44,784 | FINSH | MASON | CON |  |
| EC2040 |  | Building 1 Elevators Complete |  | 78.42d | 2014-04-21 | 2014-08-07 | EC2000 SS, EC1750 FF+15d, EC2020 | Conveying Subcontractor [432 h]; Electrician [432 h] | 72,576 | FINSH | HARIS | CON |  |
| EC2070 |  | Unit Finishes Building North - Floor 2 |  | 221.5d | 2014-04-28 | 2015-03-04 | EC2030 SS+5d | Finishes & Fit-out Subcontractor [108 h]; Rough Carpenter [108 h]; Finish Carpenter [108 h]; Millwork Subcontractor [108 h]; Drywall Subcontractor [108 h]; Floor and Carpet Layer [108 h]; Painter [36 h]; Plumber [108 h]; HVAC [108 h]; Electrician [108 h] | 44,784 | FINSH | MASON | CON |  |
| EC2120 |  | Unit Finishes Building South - Floor 2 |  | 221.5d | 2014-05-05 | 2015-03-11 | EC2070 SS+5d | Finishes & Fit-out Subcontractor [108 h]; Rough Carpenter [108 h]; Finish Carpenter [108 h]; Millwork Subcontractor [108 h]; Drywall Subcontractor [108 h]; Floor and Carpet Layer [108 h]; Painter [36 h]; Plumber [108 h]; HVAC [108 h]; Electrician [108 h] | 44,784 | FINSH | MASON | CON |  |
| EC2150 |  | Unit Finishes Building North - Floor 3 |  | 221.5d | 2014-05-12 | 2015-03-18 | EC2120 SS+5d, EC2040 FF+40d | Finishes & Fit-out Subcontractor [108 h]; Rough Carpenter [108 h]; Finish Carpenter [108 h]; Millwork Subcontractor [108 h]; Drywall Subcontractor [108 h]; Floor and Carpet Layer [108 h]; Painter [36 h]; Plumber [108 h]; HVAC [108 h]; Electrician [108 h] | 44,784 | FINSH | MASON | CON |  |
| EC2170 |  | Unit Finishes Building South - Floor 3 |  | 221.5d | 2014-05-19 | 2015-03-25 | EC2150 SS+5d | Finishes & Fit-out Subcontractor [108 h]; Rough Carpenter [108 h]; Finish Carpenter [108 h]; Millwork Subcontractor [108 h]; Drywall Subcontractor [108 h]; Floor and Carpet Layer [108 h]; Painter [36 h]; Plumber [108 h]; HVAC [108 h]; Electrician [108 h] | 44,784 | FINSH | MASON | CON |  |
| EC2200 |  | Unit Finishes Building North - Floor 4 |  | 218.57d | 2014-05-26 | 2015-03-27 | EC2170 SS+5d | Finishes & Fit-out Subcontractor [108 h]; Rough Carpenter [108 h]; Finish Carpenter [108 h]; Millwork Subcontractor [108 h]; Drywall Subcontractor [108 h]; Floor and Carpet Layer [108 h]; Painter [36 h]; Plumber [108 h]; HVAC [108 h]; Electrician [108 h] | 22,392 | FINSH | MASON | CON |  |
| EC2210 |  | Unit Finishes Building South - Floor 4 |  | 218.57d | 2014-06-02 | 2015-04-03 | EC2200 SS+5d | Finishes & Fit-out Subcontractor [108 h]; Rough Carpenter [108 h]; Finish Carpenter [108 h]; Millwork Subcontractor [108 h]; Drywall Subcontractor [108 h]; Floor and Carpet Layer [108 h]; Painter [36 h]; Plumber [108 h]; HVAC [108 h]; Electrician [108 h] | 22,392 | FINSH | MASON | CON |  |
| EC2410 |  | Final Inspections and Punchlist |  | 81.25d | 2015-04-03 | 2015-07-27 | EC2030, EC2150, EC2210, EC2000, EC2070, EC2120, EC2170, EC2200 | Finishes & Fit-out Subcontractor [81 h]; Drywall Subcontractor [81 h]; Floor and Carpet Layer [81 h]; Painter [27 h]; Plumber [81 h]; HVAC [81 h]; Electrician [81 h] | 19,980 | FINSH | MASON | ENG |  |

| ID | WBS | Activity | Type | Duration | Start | Finish | Predecessors | Constraint | Resources | Cost | Responsibility | Phase | Department | Key Milestones |
| --- | --- | --- | --- | --- | --- | --- | --- | --- | --- | --- | --- | --- | --- | --- |
|  | 5 | **Courtyard** |  |  | 2015-01-12 | 2015-06-04 |  |  |  |  |  |  |  |  |
| EC2330 |  | Courtyard Walks and Amenities |  | 102.85d | 2015-01-12 | 2015-06-04 | EC2300 |  | Landscaping Subcontractor [810 h] | 64,800 | MILLS | FINSH | ENG |  |
|  | 5 | **Garage 1** |  |  | 2014-01-01 | 2015-08-26 |  |  |  |  |  |  |  |  |
| EC1420 |  | Start Garage | milestone | 0d | 2014-01-01 | 2014-01-01 |  | as late as possible |  |  | MILLS | DESGN | CON | Key MS |
| EC1430 |  | Shop Drawings, Review & Approval |  | 83.58d | 2014-01-01 | 2014-04-28 | EC1420 | as late as possible | Concrete Foundation Subcontractor [339.74 h]; Project Managers [351.46 h] | 69,120 | MILLS | DESGN | CON |  |
| EC1810 |  | Fab & Delivery |  | 81d | 2014-04-28 | 2014-08-19 | EC1430 | as late as possible | Concrete Foundation Subcontractor [254.81 h]; Project Managers [263.59 h] | 77,320.68 | MILLS | PROCR | CON |  |
| EC2090 |  | Erect Precast Structure |  | 108d | 2014-08-19 | 2015-01-16 | EC2020 FS+5d, EC1810 |  | Concrete Foundation Subcontractor [396.42 h]; Project Managers [251.58 h] | 104,442.35 | MILLS | STRUC | CON |  |
| EC2280 |  | Entry Feature/Sign Wall |  | 81d | 2015-01-16 | 2015-05-11 | EC2090 |  | Concrete Foundation Subcontractor [135 h]; Fire Suppression Subcontractor [135 h]; Electrician [135 h]; Project Managers [135 h] | 64,530 | MASON | DESGN | ENG |  |
| EC2310 |  | Entry Feature/Sign Wall |  | 81d | 2015-04-13 | 2015-08-04 | EC2280 FS-20d |  | Concrete Foundation Subcontractor [432 h]; Project Managers [432 h] | 129,600 | MASON | CLOSE | CON |  |
| EC2380 |  | Entry Feature/Sign Wall |  | 16.2d | 2015-08-04 | 2015-08-26 | EC2310 |  | Concrete Foundation Subcontractor [86.4 h]; Project Managers [129.6 h] | 30,240 | MASON | FINSH | ENG |  |
| EC2390 |  | Entry Feature/Sign Wall | milestone | 0d | 2015-08-26 | 2015-08-26 | EC2400 |  |  |  | MASON | FINSH | ENG | Key MS |
| EC2400 |  | Entry Feature/Sign Wall | milestone | 0d | 2015-08-26 | 2015-08-26 | EC2310, EC2380 |  |  |  | MASON | FINSH | ENG | Key MS |
|  | 6 | **Garage 2** |  |  | 2014-01-01 | 2015-11-13 |  |  |  |  |  |  |  |  |
| EC1020 |  | Start Garage | milestone | 0d | 2014-01-01 | 2014-01-01 |  | as late as possible |  |  | MASON | DESGN | ENG | Key MS |
| EC1030 |  | Shop Drawings, Review and Approval |  | 81d | 2014-01-01 | 2014-04-23 | EC1020 | as late as possible | Concrete Foundation Subcontractor [339.74 h]; Project Managers [351.46 h] | 103,094.24 | MASON | DESGN | ENG |  |
| EC1180 |  | Fab & Delivery |  | 83.95d | 2014-04-24 | 2014-08-19 | EC1030 | as late as possible | Concrete Foundation Subcontractor [259.2 h]; Project Managers [259.2 h] | 77,760 | MASON | PROCR | ENG |  |
| EC1280 |  | Erect Precast Structure |  | 107.88d | 2014-08-19 | 2015-01-16 | EC1180 |  | Concrete Foundation Subcontractor [311.38 h]; Project Managers [336.62 h] | 79,106.49 | MASON | STRUC | ENG |  |
| EC1590 |  | Fire Protection and Lighting |  | 81.12d | 2015-01-16 | 2015-05-11 | EC1280 |  | Concrete Foundation Subcontractor [133.85 h]; Fire Suppression Subcontractor [133.85 h]; Electrician [133.85 h]; Project Managers [138.46 h] | 64,440 | MASON | DESGN | ENG |  |
| EC1680 |  | Finishes and Striping |  | 97.45d | 2015-04-13 | 2015-08-27 | EC1590 FS-20d |  | Concrete Foundation Subcontractor [432 h]; Project Managers [432 h] | 129,600 | MASON | FINSH | ENG |  |
| EC2060 |  | Punch List Garage |  | 56.58d | 2015-08-27 | 2015-11-13 | EC1680 |  | Concrete Foundation Subcontractor [108 h]; Project Managers [108 h] | 27,000 | MASON | FINSH | ENG |  |
| EC2180 |  | Complete Garage 2 | milestone | 0d | 2015-11-13 | 2015-11-13 | EC2190 |  |  |  | MASON | FINSH | ENG | Key MS |
| EC2190 |  | Complete Garage | milestone | 0d | 2015-11-13 | 2015-11-13 | EC1680, EC2060 |  |  |  | MASON | FINSH | ENG | Key MS |
|  | 7 | **Roads, Utilities & Pavers** |  |  | 2014-01-01 | 2016-05-03 |  |  |  |  |  |  |  |  |
| EC1000 |  | Curbs & Paving |  | 81d | 2014-01-01 | 2014-04-23 |  |  | Paving & Roadways Subcontractor [648 h] | 168,480 | EVANS | CLOSE | ENG |  |
| EC1040 |  | Site Cleanup |  | 81d | 2014-01-01 | 2014-04-23 |  |  | Electrician [648 h] | 5,184 | HARIS | DESGN | ENG |  |
| EC1050 |  | Site Cleanup |  | 78.3d | 2014-01-01 | 2014-04-21 |  |  | Electrician [626.4 h] | 5,011.2 | HARIS | DESGN | ENG |  |
| EC1100 |  | Storm Drainage Site Work |  | 81d | 2014-01-01 | 2014-04-23 | EC1080 |  | Utilities Subcontractor [648 h] | 136,080 | EVANS | STRUC | CON |  |
| EC1110 |  | Site Electrical Work & Temp Power |  | 13.5d | 2014-01-01 | 2014-01-20 | EC1100 SS |  | Electrician [108 h] | 864 | EVANS | STRUC | CON |  |
| EC1750 |  | Electric to Building 1 Power Vault |  | 78.42d | 2014-01-01 | 2014-04-21 |  |  | Electrician [626.4 h] | 5,011.2 | MASON | DESGN | ENG |  |
| EC1130 |  | Curbs & Paving |  | 75.6d | 2014-01-15 | 2014-04-30 | EC1000 SS+10d |  | Landscaping Subcontractor [604.8 h] | 48,384 | EVANS | CLOSE | ENG |  |
| EC1200 |  | Curbs & Paving |  | 75.83d | 2014-04-30 | 2014-08-14 | EC1130 |  | Landscaping Subcontractor [475.2 h] | 38,016 | EVANS | CLOSE | ENG |  |
| EC1270 |  | Curbs & Paving |  | 53.88d | 2014-08-14 | 2014-10-29 | EC1000, EC1200, EC1130 |  | Paving & Roadways Subcontractor [432 h] | 56,160 | EVANS | FINSH | CON |  |
| EC2340 |  | Fountain/Water Feature |  | 89.35d | 2015-01-12 | 2015-05-15 | EC2320 |  | Paving & Roadways Subcontractor [712.8 h] | 185,328 | MASON | DESGN | ENG |  |
| EC2250 |  | Fountain/Water Feature |  | 129.6d | 2015-01-12 | 2015-07-13 | EC2090 FS-4d |  | Pool Installation Subcontractor [1036.8 h] | 217,728 | MILLS | DESGN | ENG |  |
| EC1610 |  | Electric to Building 2 Power Vault |  | 64.92d | 2015-01-16 | 2015-04-17 | EC1280 |  | Paving & Roadways Subcontractor [518.4 h] | 134,784 | EVANS | DESGN | ENG |  |
| EC1440 |  | Electric to Building 2 Power Vault |  | 102.72d | 2015-02-18 | 2015-07-13 | EC1100, EC2019 |  | Electrician [820.8 h] | 6,566.4 | MASON | DESGN | ENG |  |
| EC2260 |  | Entry Feature/Sign Wall |  | 116.1d | 2015-11-23 | 2016-05-03 | EC2140, EC2090 |  | FF&E Specialties [928.8 h] | 100,310.4 | MILLS | DESGN | ENG |  |
| EC2290 |  | Curbs & Paving |  | 81d | 2015-11-23 | 2016-03-15 | EC2140, EC2090 |  | Paving & Roadways Subcontractor [648 h] | 168,480 | EVANS | CLOSE | CON |  |

Notes:
- EC2090: ï»¿ / jdfpje&nb / Steps: Masonry; Colar Beam; Roof Trusses; Widows & Doors; Wall Finishes; Roof Membrane & Tiles; Plumbing; Electrical; HVAC; Lockup; FF&E; Tile Flooring

| ID | WBS | Activity | Type | Duration | Start | Finish | Predecessors | Resources | Cost | Responsibility | Phase | Department | Key Milestones |
| --- | --- | --- | --- | --- | --- | --- | --- | --- | --- | --- | --- | --- | --- |
|  | 8 | **Landscape & Irrigation** |  |  | 2014-07-31 | 2017-10-10 |  |  |  |  |  |  |  |
| EC1600 |  | Curbs & Paving |  | 53.88d | 2014-07-31 | 2014-10-14 | EC1130 FS+5d, EC1000 SS+40d, EC1000 FS+70d | Landscaping Subcontractor [432 h] | 17,280 | EVANS | FINSH | CON |  |
| EC2360 |  | Landscape & Irrigation |  | 324.25d | 2016-07-13 | 2017-10-10 | EC2140, EC2290 FF+15d, EC2270 FS-6d, EC2090 | Landscaping Subcontractor [204.32 h]; Project Managers [875.68 h] | 103,913.51 | MILLS | ROUGH | ENG |  |
| EC2430 |  | Substantial Completion - All TCO | milestone | 0d | 2017-10-10 | 2017-10-10 | EC1600, EC1200, EC2440, EC1130, EC2180, EC1270, EC2390, EC2420 |  |  | MILLS | FINSH | CON | Key MS |
| EC1080 |  | Curbing | WBS summary | 984.58d | 2014-01-01 | 2017-10-10 | EC1010 FS+1d |  |  | FOLEY | ROUGH | ENG | Key MS |
| EC1010 |  | Curbs & Paving | milestone | 0d | 2014-01-01 | 2014-01-01 |  |  |  | EVANS | FINSH | CON | Key MS |

## Activity codes

| Code | Value | Meaning |
| --- | --- | --- |
| Department | CON | Construction Department |
| Department | ENG | Engineering Department |
| Key Milestones | Key MS | Key Milestones |
| Phase | CLOSE | Close-In Phase |
| Phase | DESGN | Design and Engineering Phase |
| Phase | FINSH | Finishes and Closeout Phase |
| Phase | FOUND | Foundation Construction Phase |
| Phase | PROCR | Procurement Phase |
| Phase | ROUGH | Rough-in Phase |
| Phase | STRUC | Structural Phase |
| Responsibility | EVANS | Tim Evans |
| Responsibility | FOLEY | Meg Foley |
| Responsibility | HARIS | Linda Haris |
| Responsibility | MASON | Andy Mason |
| Responsibility | MILLS | Tom Mills |
| Responsibility | NOLAN | Joe Nolan |
